# INST706_Project_Step1

Schedule from MS Project, 2014-05-27 to 2015-01-14, costs in $.
Toshiba

## Calendars

- Standard: Mon-Fri 08:00-12:00, 13:00-17:00; Sat-Sun off. Exceptions (off unless hours are given): 2014-07-04 (Independence Day), 2014-09-01 (Labor Day), 2014-11-27 (Thanks Giving Day), 2014-12-24 to 2014-12-25 (Christmas), 2014-12-31 to 2015-01-01 (New Year's).

## Resources

| Resource | Rate |
| --- | --- |
| Chris Johnson (Project Manager) | 75 |
| Ryan Neff (Functional Lead) | 75 |
| Stacy Lyle (Functional Analyst) | 75 |
| Rick Burke (Infrastructure Lead) | 75 |
| Marc Sanders (Development Lead) | 75 |
| Developer 1 (TBD) | 165 |
| Sanjay Vohra (DBA) | 75 |
| Kara Siposki (Test Lead) | 75 |
| Todd Eliason (Tester) | 75 |
| Developer 2 (TBD) | 175 |
| Developer 3 (TBD) | 175 |
| Trainer 1 | 75 |
| End-User | 75 |
| ERP Expert | 175 |
| Order Processing expert | 175 |

## Schedule

| ID | WBS | Task | Duration | Start | Finish | Predecessors | Total slack | Free slack | Resources | Work | Cost |
| --- | --- | --- | --- | --- | --- | --- | --- | --- | --- | --- | --- |
| 1 | 1 | **Overall Project** | 160d | 2014-05-27 | 2015-01-14 |  | -4d | 0d |  | 8900.8h | 900,349.67 |
| 2 | 1.1 | **Project Management** | 160d | 2014-05-27 | 2015-01-14 |  | 0d |  |  | 1252h | 93,900 |
| 3 | 1.1.1 | Manage Project | 160d | 2014-05-27 | 2015-01-14 | 69FF | 0d |  | Chris Johnson (Project Manager) [90%] | 1152h | 86,400 |
| 4 | 1.1.2 | Document project progress | 125d | 2014-05-30 | 2014-11-25 | 68FF | 31.31d |  | Chris Johnson (Project Manager) [10%] | 100h | 7,500 |
| 5 | 1.2 | **System Requirements** | 13.33d | 2014-05-27 | 2014-06-13 |  |  |  |  | 295.92h | 22,194 |
| 6 | 1.2.1 | Gather Business Requirements | 4d | 2014-05-27 | 2014-05-30 |  | -4d | 0d | Ryan Neff (Functional Lead); Stacy Lyle (Functional Analyst) | 64h | 4,800 |
| 7 | 1.2.2 | Design Business Process Flows | 2d | 2014-06-02 | 2014-06-03 | 6 | -4d | 0d | Ryan Neff (Functional Lead); Stacy Lyle (Functional Analyst) | 32h | 2,400 |
| 8 | 1.2.3 | Document Business Process Flows | 0.5d | 2014-06-09 | 2014-06-09 | 7 | 3.83d |  | Ryan Neff (Functional Lead); Stacy Lyle (Functional Analyst) | 8h | 600 |
| 9 | 1.2.4 | Finalize Technical Requirements | 6d | 2014-05-27 | 2014-06-03 |  | 4d |  | Rick Burke (Infrastructure Lead) | 48h | 3,600 |
| 10 | 1.2.5 | Create Operational Requirements | 5d | 2014-06-04 | 2014-06-10 | 6, 7 | -4d | 0d | Ryan Neff (Functional Lead); Stacy Lyle (Functional Analyst); Rick Burke (Infrastructure Lead) | 120h | 9,000 |
| 11 | 1.2.6 | Identify Technical Infrastructure Needs | 2d | 2014-06-11 | 2014-06-12 | 9, 10 | -1d | 0d | Rick Burke (Infrastructure Lead) | 16h | 1,200 |
| 12 | 1.2.7 | Document Requirements | 0.66d | 2014-06-13 | 2014-06-16 | 6, 9, 10, 11 | -1d | 0d | Rick Burke (Infrastructure Lead); Stacy Lyle (Functional Analyst); Ryan Neff (Functional Lead) | 7.92h | 594 |
| 13 | 1.3 | **Software Requirements** | 20.5d | 2014-06-11 | 2014-07-10 |  |  |  |  | 336h | 25,200 |
| 14 | 1.3.1 | **Create Functional Requirements** | 20.5d | 2014-06-11 | 2014-07-10 | 6, 7, 10 |  |  |  | 216h | 16,200 |
| 15 | 1.3.1.1 | Capture Customer Profile | 4d | 2014-06-19 | 2014-06-25 |  | -1.83d | 0d | Ryan Neff (Functional Lead) | 32h | 2,400 |
| 16 | 1.3.1.2 | View and Search Product Catalog | 6d | 2014-06-11 | 2014-06-19 |  | -4.5d | 0d | Ryan Neff (Functional Lead) | 48h | 3,600 |
| 17 | 1.3.1.3 | Updating and Calculating Shopping Cart | 3d | 2014-06-25 | 2014-06-30 | 16 | -4.83d | 0d | Ryan Neff (Functional Lead) | 24h | 1,800 |
| 18 | 1.3.1.4 | Taking Payments | 6d | 2014-06-11 | 2014-06-19 |  | 2.17d |  | Stacy Lyle (Functional Analyst) | 48h | 3,600 |
| 19 | 1.3.1.5 | Submit Order | 8d | 2014-06-30 | 2014-07-11 | 15, 16, 17, 18 | -4.83d | 0d | Ryan Neff (Functional Lead) [50%] | 32h | 2,400 |
| 20 | 1.3.1.6 | Check Order History & Order Status | 3d | 2014-07-11 | 2014-07-16 | 19 | -4.83d | 0d | Ryan Neff (Functional Lead) | 24h | 1,800 |
| 21 | 1.3.1.7 | Document Functional requirements | 0.5d | 2014-07-16 | 2014-07-17 | 15, 16, 17, 18, 19, 20 | -4.83d | 0d | Ryan Neff (Functional Lead); Stacy Lyle (Functional Analyst) | 8h | 600 |
| 22 | 1.3.2 | Create Data Requirements | 3d | 2014-06-25 | 2014-06-30 | 15, 16 | 5.67d |  | Stacy Lyle (Functional Analyst) | 24h | 1,800 |
| 23 | 1.3.3 | Create ERP Interface Requirements | 7d | 2014-06-30 | 2014-07-10 | 19SS | -1.33d | 0d | Stacy Lyle (Functional Analyst) | 56h | 4,200 |
| 24 | 1.3.4 | Create User Interface Requirements | 4d | 2014-06-19 | 2014-06-25 | 14SS | 8.67d |  | Stacy Lyle (Functional Analyst) | 32h | 2,400 |
| 25 | 1.3.5 | Document Data, ERP Interface and User Interface Requiremnts | 1d | 2014-07-10 | 2014-07-11 | 22, 23, 24 | -1.33d | 0d | Stacy Lyle (Functional Analyst) | 8h | 600 |

| ID | WBS | Task | Duration | Start | Finish | Predecessors | Total slack | Free slack | Resources | Work | Cost |
| --- | --- | --- | --- | --- | --- | --- | --- | --- | --- | --- | --- |
| 26 | 1.4 | **Detailed Design** | 31.19d | 2014-07-10 | 2014-08-22 | 13 | -5d | 0d |  | 784h | 74,784 |
| 27 | 1.4.1 | Design Capture Customer Profile Pages & Components | 14d | 2014-07-10 | 2014-07-30 |  | -5d | 0d | Marc Sanders (Development Lead); Ryan Neff (Functional Lead) [50%] | 108h | 8,100 |
| 28 | 1.4.2 | Design View and Search Product Catalog Pages & Components | 10.66d | 2014-07-10 | 2014-07-25 |  | 4.2d | 0d | Developer 1 (TBD); Ryan Neff (Functional Lead) [50%] | 108h | 14,580 |
| 29 | 1.4.3 | Design Updating and Calculating Shopping Cart | 3.42d | 2014-07-25 | 2014-07-30 | 28 | 4.2d | 0d | Developer 1 (TBD); Ryan Neff (Functional Lead) | 48h | 5,760 |
| 30 | 1.4.4 | Design Taking Payments Pages & Components | 5.83d | 2014-07-10 | 2014-07-22 |  | 10.28d | 6.08d | Marc Sanders (Development Lead); Stacy Lyle (Functional Analyst) | 48h | 3,600 |
| 31 | 1.4.5 | Design Submit Order Pages & Components | 9.25d | 2014-07-30 | 2014-08-12 | 27, 28, 29, 30 | 9.86d | 0d | Marc Sanders (Development Lead); Ryan Neff (Functional Lead) | 128h | 9,600 |
| 32 | 1.4.6 | Design check Order History & Order Status Pages & Components | 2d | 2014-08-12 | 2014-08-14 | 31 | 9.86d | 0d | Marc Sanders (Development Lead); Ryan Neff (Functional Lead) | 32h | 2,400 |
| 33 | 1.4.7 | Design Logical & Physical Data Model | 13.83d | 2014-07-10 | 2014-07-30 |  | -1.83d | 0d | Sanjay Vohra (DBA); Stacy Lyle (Functional Analyst) | 144h | 10,800 |
| 34 | 1.4.8 | Design ERP Interface | 16.91d | 2014-07-30 | 2014-08-22 | 27, 28, 29, 30 | 4.2d | 0d | Developer 1 (TBD) [66.7%]; Stacy Lyle (Functional Analyst) [66.7%] | 160h | 19,200 |
| 35 | 1.4.9 | Document the design of all modules | 0.2d | 2014-08-22 | 2014-08-22 | 27, 28, 29, 30, 31, 32, 33, 34 | 4.2d |  | Ryan Neff (Functional Lead); Stacy Lyle (Functional Analyst); Developer 1 (TBD); Marc Sanders (Development Lead); Sanjay Vohra (DBA) | 8h | 744 |
| 36 | 1.5 | **Test Planning** | 55.86d | 2014-07-10 | 2014-09-29 |  | 4.2d |  |  | 448h | 33,600 |
| 37 | 1.5.1 | Gather Testing Requirements | 7d | 2014-07-10 | 2014-07-21 | 14 | 28.39d | 24.19d | Kara Siposki (Test Lead); Todd Eliason (Tester) | 112h | 8,400 |
| 38 | 1.5.2 | Create System Test Plan & Test Cases | 10d | 2014-08-22 | 2014-09-08 | 37, 26 | 4.2d | 0d | Kara Siposki (Test Lead); Todd Eliason (Tester) | 160h | 12,000 |
| 39 | 1.5.3 | Write System Test Scripts | 14.67d | 2014-09-08 | 2014-09-29 | 38 | 4.2d | 0d | Kara Siposki (Test Lead); Todd Eliason (Tester) | 176h | 13,200 |
| 40 | 1.6 | **Technical Infrastructure** | 108d | 2014-06-13 | 2014-11-13 |  |  |  |  | 876.8h | 65,760 |
| 41 | 1.6.1 | Create Development Environment | 20d | 2014-06-13 | 2014-07-14 | 11 | 3.17d | 0d | Rick Burke (Infrastructure Lead) | 160h | 12,000 |
| 42 | 1.6.2 | Create Testing Environment | 38d | 2014-07-14 | 2014-09-05 | 41 | 3.17d | 0d | Rick Burke (Infrastructure Lead) [90%] | 273.6h | 20,520 |
| 43 | 1.6.3 | Support Development Environment | 38d | 2014-07-14 | 2014-09-05 | 41 | 49.17d |  | Rick Burke (Infrastructure Lead) [10%] | 30.4h | 2,280 |
| 44 | 1.6.4 | Support Testing Environment & Deployment | 46d | 2014-09-05 | 2014-11-10 | 42 | 3.17d |  | Rick Burke (Infrastructure Lead) | 368h | 27,600 |
| 45 | 1.6.5 | Support Database | 46d | 2014-09-17 | 2014-11-20 | 55 | -5d | 0d | Sanjay Vohra (DBA) [10%] | 36.8h | 2,760 |
| 46 | 1.6.6 | Document Technical infrastructure details | 0.5d | 2014-11-20 | 2014-11-20 | 41, 42, 43, 44, 45 | -5d | 0d | Rick Burke (Infrastructure Lead); Sanjay Vohra (DBA) | 8h | 600 |
| 47 | 1.7 | **Development & Unit Test** | 40.48d | 2014-07-30 | 2014-09-25 | 41 | -5d | 0d |  | 1292.24h | 167,110.8 |
| 48 | 1.7.1 | Train developers | 3d | 2014-07-30 | 2014-08-04 | 27 | -5d | 0d | Trainer 1; Developer 1 (TBD); Developer 2 (TBD); Developer 3 (TBD) | 96h | 14,160 |
| 49 | 1.7.2 | Build Capture Customer Profile Pages & Components | 13d | 2014-08-04 | 2014-08-21 | 27, 48 | 13.05d | 6d | Developer 2 (TBD) | 104h | 18,200 |
| 50 | 1.7.3 | Build View and Search Product Catalog Pages & Components | 12d | 2014-08-04 | 2014-08-20 | 28, 48 | 7.05d | 0d | Developer 3 (TBD) | 96h | 16,800 |
| 51 | 1.7.4 | Build Updating and Calculating Shopping Cart | 7d | 2014-08-20 | 2014-08-29 | 29, 50, 48 | 7.05d | 0d | Developer 3 (TBD) | 56h | 9,800 |
| 52 | 1.7.5 | Build Taking Payments Pages & Components | 6d | 2014-08-21 | 2014-08-29 | 30, 48 | 7.05d | 0d | Developer 2 (TBD) | 48h | 8,400 |
| 53 | 1.7.6 | Build Submit Order Pages & Components | 12d | 2014-08-29 | 2014-09-17 | 31, 49, 50, 51, 52, 48 | 7.05d | 0.99d | Developer 2 (TBD); Developer 3 (TBD) | 192h | 33,600 |
| 54 | 1.7.7 | Build Check Order History & Order Status Pages & Components | 6d | 2014-08-14 | 2014-08-25 | 32, 48 | 23.52d | 17.46d | Marc Sanders (Development Lead) | 48h | 3,600 |
| 55 | 1.7.8 | Build Logical & Physical Data Model | 31d | 2014-08-04 | 2014-09-17 | 33, 48 | -5d | 0d | Sanjay Vohra (DBA) [50%] | 124h | 9,300 |
| 56 | 1.7.9 | Build ERP Interface | 18d | 2014-08-22 | 2014-09-18 | 34, 48 | 6.06d | 0d | Developer 1 (TBD) | 144h | 23,760 |
| 57 | 1.7.10 | Support Development & Assembly Test | 23d | 2014-08-22 | 2014-09-25 | 26, 48 | 74.02d | 0d | Ryan Neff (Functional Lead); Stacy Lyle (Functional Analyst) | 368h | 27,600 |
| 58 | 1.7.11 | Document development work and best practices | 0.29d | 2014-09-25 | 2014-09-25 | 49, 50, 51, 52, 53, 54, 55, 56, 57 | 74.02d |  | Developer 1 (TBD); Developer 2 (TBD); Developer 3 (TBD); Stacy Lyle (Functional Analyst); Sanjay Vohra (DBA); Marc Sanders (Development Lead); Ryan Neff (Functional Lead) | 16.24h | 1,890.8 |

| ID | WBS | Task | Duration | Start | Finish | Predecessors | Total slack | Free slack | Resources | Work | Cost |
| --- | --- | --- | --- | --- | --- | --- | --- | --- | --- | --- | --- |
| 59 | 1.8 | **Testing** | 51.2d | 2014-08-22 | 2014-11-04 |  |  |  |  | 2191.84h | 262,280.87 |
| 60 | 1.8.1 | **Perform Assembly Testing** | 17.99d | 2014-08-29 | 2014-09-25 | 37 | 6.06d | 1.87d |  | 256h | 30,800 |
| 61 | 1.8.1.1 | Perform Phase 1 Testing | 12d | 2014-08-29 | 2014-09-17 | 49, 50, 51 | 7.05d | 0.99d | Marc Sanders (Development Lead) | 96h | 7,200 |
| 62 | 1.8.1.2 | Perform Phase 2 Testing | 5d | 2014-09-18 | 2014-09-25 | 52, 53, 54, 61, 55, 56 | 6.06d |  | Marc Sanders (Development Lead); Developer 1 (TBD); Developer 2 (TBD); Developer 3 (TBD) | 160h | 23,600 |
| 63 | 1.8.2 | Perform System Testing | 14.55d | 2014-09-29 | 2014-10-17 | 60, 38, 39 | 4.2d | 0d | Developer 1 (TBD); Developer 2 (TBD); Developer 3 (TBD); Kara Siposki (Test Lead); Marc Sanders (Development Lead); Ryan Neff (Functional Lead); Stacy Lyle (Functional Analyst); Todd Eliason (Tester); End-User; ERP Expert; Order Processing expert | 1280h | 153,018.18 |
| 64 | 1.8.3 | Perform Validation Testing | 7.27d | 2014-10-17 | 2014-10-29 | 63 | 4.2d | 0d | Kara Siposki (Test Lead); Todd Eliason (Tester); Marc Sanders (Development Lead); Developer 1 (TBD); Developer 2 (TBD); Developer 3 (TBD); Ryan Neff (Functional Lead); Stacy Lyle (Functional Analyst); End-User; ERP Expert; Order Processing expert | 640h | 76,509.09 |
| 65 | 1.8.4 | Document tests and test results | 0.33d | 2014-10-29 | 2014-10-29 | 60, 63, 64 | 4.2d |  | Developer 1 (TBD); Developer 2 (TBD); Developer 3 (TBD); Kara Siposki (Test Lead); Stacy Lyle (Functional Analyst); Todd Eliason (Tester) | 15.84h | 1,953.6 |
| 66 | 1.9 | **Deployment** | 35.77d | 2014-11-10 | 2015-01-06 | 59 | 6.87d |  |  | 1424h | 155,520 |
| 67 | 1.9.1 | Implement System | 10.33d | 2014-11-10 | 2014-11-24 |  | 6.87d | 0d | Kara Siposki (Test Lead); Todd Eliason (Tester); Marc Sanders (Development Lead); Developer 1 (TBD); Developer 2 (TBD); Developer 3 (TBD); Ryan Neff (Functional Lead); Stacy Lyle (Functional Analyst) | 640h | 71,200 |
| 68 | 1.9.2 | Deploy To Production | 1d | 2014-11-24 | 2014-11-25 | 67 | 6.87d | 0d | Kara Siposki (Test Lead); Todd Eliason (Tester); Marc Sanders (Development Lead); Developer 1 (TBD); Developer 2 (TBD); Developer 3 (TBD); Ryan Neff (Functional Lead); Stacy Lyle (Functional Analyst) | 64h | 7,120 |
| 69 | 1.9.3 | Project Wrap up | 24.44d | 2014-11-25 | 2015-01-06 | 68 | 6.87d |  | Developer 1 (TBD) [81.8%]; Developer 2 (TBD) [81.8%]; Developer 3 (TBD) [81.8%]; Kara Siposki (Test Lead) [81.8%]; Marc Sanders (Development Lead) [81.8%]; Ryan Neff (Functional Lead) [81.8%]; Stacy Lyle (Functional Analyst) [81.8%]; Todd Eliason (Tester) [81.8%] | 720h | 77,200 |
